Schedule from MS Project, 2021-03-01 to 2021-07-23, status date 2021-05-20, costs in р..
Microsoft
Команда разработчиков из 16 человек занимается созданием карты города на основе собственного модуля отображения. Проект должен быть завершен в течение 6 месяцев. Бюджет проекта: 50 000 рублей

## Calendars

- Стандартный: Mon-Fri 09:00-13:00, 14:00-18:00; Sat-Sun off. Exceptions (off unless hours are given): 2021-03-08 (Международный женский день), 2021-05-03 (Майские каникулы), 2021-05-09 to 2021-05-10 (День победы), 2021-06-12 to 2021-06-14 (День России).

## Resources

| Resource | Group | Rate | Cost per use |
| --- | --- | --- | --- |
| Ведущий программист | Программирование | 11 | 100 |
| Программист#1 | Программирование | 7 | 50 |
| Программист#2 | Программирование | 7 | 50 |
| Программист#3 | Программирование | 7 | 50 |
| Программист#4 | Программирование | 7 | 50 |
| Системный аналитик | Анализ | 20 | 300 |
| Художник-дизайнер | Дизайн | 8 | 70 |
| Технический писатель | Документация | 5 | 20 |
| Web-дизайнер | Internet | 7 | 50 |
| 3D аниматор | Дизайн | 8 | 70 |
| Мультимедиа-корреспондент | М-медиа | 3 | 20 |
| Наборщик данных#1 | Ввод данных | 2 | 10 |
| Наборщик данных#2 | Ввод данных | 2 | 10 |
| Наборщик данных#3 | Ввод данных | 2 | 10 |
| Наборщик данных#4 | Ввод данных | 2 | 10 |
| Наборщик данных#5 | Ввод данных | 2 | 10 |
| Дополнительный сервер | Аренда | 2 |  |
| Сервер | Аренда |  |  |

## Schedule

| ID | WBS | Task | Type | Duration | Start | Finish | Baseline start | Baseline finish | Baseline duration | Total slack | Free slack | Constraint | Resources | Work | Cost | Baseline cost |
| --- | --- | --- | --- | --- | --- | --- | --- | --- | --- | --- | --- | --- | --- | --- | --- | --- |
| 1 | 1 | Начало проекта | milestone | 0w | 2021-03-01 08:00 | 2021-03-01 08:00 | 2021-03-01 08:00 | 2021-03-01 08:00 | 0w | 79.1d | 77.59d |  |  |  |  |  |
| 2 | 2 | **Повторяющиеся задачи** |  | 96.88d | 2021-03-03 09:00 | 2021-07-21 17:00 |  |  |  | 1.18d |  |  |  | 76h | 1,920.49 |  |
| 3 | 2.1 | **Совещание** |  | 96.88d | 2021-03-03 09:00 | 2021-07-21 17:00 | 2021-03-03 09:00 | 2021-08-04 10:00 | 106.12d | 1.18d |  |  |  | 76h | 1,920.49 | 1,403 |
| 4 | 2.1.1 | Совещание 1 |  | 0.8h | 2021-03-03 09:00 | 2021-03-03 09:48 | 2021-03-03 09:00 | 2021-03-03 10:00 | 1h | 97.95d |  | start no earlier than 2021-03-03 08:00 | 3D аниматор; Ведущий программист; Системный аналитик; Художник-дизайнер; Мультимедиа-корреспондент | 4h | 59.2 | 61 |
| 5 | 2.1.2 | Совещание 2 |  | 0.8h | 2021-03-10 09:00 | 2021-03-10 09:48 | 2021-03-10 09:00 | 2021-03-10 10:00 | 1h | 93.95d |  | start no earlier than 2021-03-10 08:00 | 3D аниматор; Ведущий программист; Системный аналитик; Художник-дизайнер; Мультимедиа-корреспондент | 4h | 59.2 | 61 |
| 6 | 2.1.3 | Совещание 3 |  | 0.8h | 2021-03-17 09:00 | 2021-03-17 09:48 | 2021-03-17 09:00 | 2021-03-17 10:00 | 1h | 88.95d |  | start no earlier than 2021-03-17 08:00 | 3D аниматор; Ведущий программист; Системный аналитик; Художник-дизайнер; Мультимедиа-корреспондент | 4h | 59.2 | 61 |
| 7 | 2.1.4 | Совещание 4 |  | 0.43h | 2021-03-24 09:00 | 2021-03-24 09:25 | 2021-03-24 09:00 | 2021-03-24 10:00 | 1h | 84d |  | start no earlier than 2021-03-24 08:00 | 3D аниматор; Ведущий программист; Системный аналитик; Художник-дизайнер; Web-дизайнер; Мультимедиа-корреспондент; Технический писатель | 3h | 186.03 | 61 |
| 8 | 2.1.5 | Совещание 5 |  | 0.43h | 2021-03-31 09:00 | 2021-03-31 09:25 | 2021-03-31 09:00 | 2021-03-31 10:00 | 1h | 79d |  | start no earlier than 2021-03-31 08:00 | 3D аниматор; Ведущий программист; Системный аналитик; Художник-дизайнер; Web-дизайнер; Мультимедиа-корреспондент; Технический писатель | 3h | 186.03 | 61 |
| 9 | 2.1.6 | Совещание 6 |  | 0.67h | 2021-04-07 09:00 | 2021-04-07 09:40 | 2021-04-07 09:00 | 2021-04-07 10:00 | 1h | 73.97d |  | start no earlier than 2021-04-07 08:00 | 3D аниматор; Ведущий программист [20%]; Мультимедиа-корреспондент; Системный аналитик; Художник-дизайнер; Технический писатель | 4h | 126 | 61 |
| 10 | 2.1.7 | Совещание 7 |  | 0.5h | 2021-04-14 09:00 | 2021-04-14 09:30 | 2021-04-14 09:00 | 2021-04-14 10:00 | 1h | 68.99d |  | start no earlier than 2021-04-14 08:00 | Ведущий программист; Мультимедиа-корреспондент; 3D аниматор; Технический писатель | 2h | 103.5 | 61 |
| 11 | 2.1.8 | Совещание 8 |  | 0.67h | 2021-04-21 09:00 | 2021-04-21 09:40 | 2021-04-21 09:00 | 2021-04-21 10:00 | 1h | 63.97d |  | start no earlier than 2021-04-21 08:00 | Ведущий программист; 3D аниматор; Web-дизайнер | 2h | 137.33 | 61 |
| 12 | 2.1.9 | Совещание 9 |  | 1h | 2021-04-28 09:00 | 2021-04-28 10:00 | 2021-04-28 09:00 | 2021-04-28 10:00 | 1h | 58.92d |  | start no earlier than 2021-04-28 08:00 | Ведущий программист; Web-дизайнер | 2h | 68 | 61 |
| 13 | 2.1.10 | Совещание 10 |  | 1h | 2021-05-05 09:00 | 2021-05-05 10:00 | 2021-05-05 09:00 | 2021-05-05 10:00 | 1h | 54.92d |  | start no earlier than 2021-05-05 08:00 | Ведущий программист; Web-дизайнер | 2h | 68 | 61 |
| 14 | 2.1.11 | Совещание 11 |  | 1h | 2021-05-12 09:00 | 2021-05-12 10:00 | 2021-05-12 09:00 | 2021-05-12 10:00 | 1h | 50.92d |  | start no earlier than 2021-05-12 08:00 | Ведущий программист; Web-дизайнер | 2h | 68 | 61 |
| 15 | 2.1.12 | Совещание 12 |  | 2h | 2021-05-19 09:00 | 2021-05-19 11:00 | 2021-05-19 09:00 | 2021-05-19 10:00 | 1h | 45.8d |  | start no earlier than 2021-05-19 08:00 | Ведущий программист | 2h | 22 | 61 |
| 16 | 2.1.13 | Совещание 13 |  | 7h | 2021-05-26 09:00 | 2021-05-26 17:00 | 2021-05-26 09:00 | 2021-05-26 10:00 | 1h | 40.17d |  | start no earlier than 2021-05-26 08:00 | Ведущий программист | 7h | 77 | 61 |
| 17 | 2.1.14 | Совещание 17 |  | 7h | 2021-06-23 09:00 | 2021-06-23 17:00 | 2021-06-23 09:00 | 2021-06-23 10:00 | 1h | 21.18d |  | start no earlier than 2021-06-23 08:00 | Ведущий программист | 7h | 177 | 61 |
| 18 | 2.1.15 | Совещание 18 |  | 7h | 2021-06-30 09:00 | 2021-06-30 17:00 | 2021-06-30 09:00 | 2021-06-30 10:00 | 1h | 16.18d |  | start no earlier than 2021-06-30 08:00 | Ведущий программист | 7h | 177 | 61 |
| 19 | 2.1.16 | Совещание 19 |  | 3.5h | 2021-07-07 09:00 | 2021-07-07 12:30 | 2021-07-07 09:00 | 2021-07-07 10:00 | 1h | 11.61d |  | start no earlier than 2021-07-07 08:00 | Технический писатель; Ведущий программист | 7h | 156 | 61 |
| 20 | 2.1.17 | Совещание 20 |  | 3.5h | 2021-07-14 09:00 | 2021-07-14 12:30 | 2021-07-14 09:00 | 2021-07-14 10:00 | 1h | 6.61d |  | start no earlier than 2021-07-14 08:00 | Технический писатель; Ведущий программист | 7h | 156 | 61 |
| 21 | 2.1.18 | Совещание 21 |  | 7h | 2021-07-21 09:00 | 2021-07-21 17:00 | 2021-07-21 09:00 | 2021-07-21 10:00 | 1h | 1.18d |  | start no earlier than 2021-07-21 08:00 | Технический писатель | 7h | 35 | 61 |
| 22 | 3 | **Анализ** |  | 30.75d | 2021-03-01 09:00 | 2021-04-13 16:00 |  |  |  | 0.8d |  |  |  | 360h | 6,700 |  |
| 23 | 3.1 | Анализ и проектирование ядра |  | 3.08w | 2021-03-01 09:00 | 2021-03-23 14:20 | 2021-03-01 09:00 | 2021-03-23 14:20 | 3.08w | 1.51d | 0d |  | Ведущий программист; Системный аналитик | 240h | 4,000 | 4,000 |
| 24 | 3.2 | Анализ и построение структуры базы объектов |  | 3w | 2021-03-23 12:00 | 2021-04-13 16:00 | 2021-03-23 12:00 | 2021-04-06 15:00 | 2w | 0.8d | 0d |  | Системный аналитик | 120h | 2,700 | 1,900 |

| ID | WBS | Task | Type | Duration | Start | Finish | Predecessors | Baseline start | Baseline finish | Baseline duration | Total slack | Free slack | Constraint | Resources | Work | Cost | Baseline cost |
| --- | --- | --- | --- | --- | --- | --- | --- | --- | --- | --- | --- | --- | --- | --- | --- | --- | --- |
| 25 | 4 | **Документация** |  | 18d | 2021-03-25 12:00 | 2021-04-20 12:01 |  |  |  |  | 48.48d |  |  |  | 120h | 620 |  |
| 26 | 4.1 | Написание руководства пользователя |  | 3w | 2021-03-25 12:00 | 2021-04-20 12:01 | 36SS+2d | 2021-06-23 12:42 | 2021-07-15 14:42 | 3w | 48.48d | 0d |  | Технический писатель | 120h | 620 | 620 |
| 27 | 5 | **Внесение данных** |  | 61.25d | 2021-04-23 09:00 | 2021-07-22 11:00 |  |  |  |  | 0.8d |  |  |  | 2691h | 10,098.3 |  |
| 28 | 5.1 | Наполнение сайта |  | 3w | 2021-04-23 09:00 | 2021-05-18 12:00 | 33 | 2021-07-06 10:42 | 2021-07-28 10:00 | 3w | 46.67d |  | start no earlier than 2021-04-23 09:00 | Web-дизайнер | 120h | 890 | 890 |
| 29 | 5.2 | **Построение базы объектов** |  | 60d | 2021-04-26 11:00 | 2021-07-22 11:00 |  | 2021-03-23 12:00 | 2021-07-23 15:00 | 85.25d | 0.8d |  |  | Сервер [0.1%]; Дополнительный сервер | 2571h | 9,208.3 | 15,392 |
| 30 | 5.2.1 | Наполнение базы объектов |  | 12w | 2021-04-26 11:00 | 2021-07-22 11:00 | 45 | 2021-04-27 15:00 | 2021-07-23 15:00 | 12w | 0.8d |  |  | Наборщик данных#1; Наборщик данных#2; Наборщик данных#3; Наборщик данных#4; Наборщик данных#5 | 2400h | 4,850 | 4,850 |
| 31 | 6 | **Разработка** |  | 100.05d | 2021-03-01 09:00 | 2021-07-23 09:24 |  |  |  |  | 0d |  |  |  | 1248h | 9,176.73 |  |
| 32 | 6.1 | Создание справочной системы |  | 2w | 2021-07-07 12:30 | 2021-07-23 09:24 | 49 | 2021-07-19 09:00 | 2021-08-02 13:00 | 2w | 0d |  | start no earlier than 2021-07-07 09:00 | Технический писатель | 80h | 420 | 420 |
| 33 | 6.2 | Разработка дизайна сайта |  | 2.94w | 2021-03-26 12:26 | 2021-04-21 10:35 | 34 | 2021-06-24 14:00 | 2021-07-06 10:42 | 1.49w | 48.48d | 1.8d |  | 3D аниматор; Web-дизайнер; Художник-дизайнер | 120h | 1,110 | 1,110 |
| 34 | 6.3 | Разработка структуры сайта |  | 1d | 2021-03-25 12:00 | 2021-03-26 12:00 | 26SS | 2021-06-23 12:42 | 2021-06-24 12:42 | 1d | 48.48d | 0d |  | Web-дизайнер | 8h | 106 | 106 |
| 35 | 6.4 | Создание мультимедиа - наполнения |  | 6w | 2021-03-01 09:00 | 2021-04-15 16:18 |  | 2021-04-06 16:20 | 2021-05-21 15:20 | 6w | 67.26d |  |  | Мультимедиа-корреспондент | 240h | 740 | 740 |
| 36 | 6.5 | Разработка дизайна руководства |  | 1w | 2021-03-23 12:00 | 2021-04-01 14:45 |  | 2021-06-21 12:42 | 2021-06-28 16:42 | 1w | 48.48d | 0d |  | Художник-дизайнер | 40h | 390 | 390 |
| 37 | 6.6 | Создание модели ядра |  | 2.89w | 2021-03-23 14:20 | 2021-04-14 11:55 | 23 | 2021-03-23 14:20 | 2021-04-15 14:33 | 3.41w | 1.51d | 0d |  | Ведущий программист; Программист#1; Программист#2; Программист#3; Программист#4 | 400h | 3,320.73 | 3,396.7 |
| 38 | 6.7 | Разработка 2D графических элементов |  | 3w | 2021-03-01 09:00 | 2021-03-23 12:00 |  | 2021-03-01 09:00 | 2021-03-23 12:00 | 3w | 66.38d | 0d |  | Художник-дизайнер | 120h | 1,030 | 1,030 |
| 39 | 6.8 | Разработка 3D графичиских элементов |  | 2w | 2021-03-01 09:00 | 2021-03-16 12:20 | 38SS | 2021-03-01 09:00 | 2021-03-16 12:20 | 2w | 66.38d | 0d |  | 3D аниматор | 80h | 710 | 710 |
| 40 | 6.9 | Создание заставки |  | 4w | 2021-03-16 12:20 | 2021-04-16 15:20 | 39 | 2021-03-16 12:20 | 2021-04-06 16:20 | 3w | 66.38d |  |  | 3D аниматор | 160h | 1,350 | 1,030 |
| 41 | 7 | **Тестирование** |  | 57.12d | 2021-04-14 11:55 | 2021-07-07 12:52 |  |  |  |  | 1.51d |  |  |  | 520h | 4,647.5 |  |
| 42 | 7.1 | Тестирование модели ядра |  | 0.2w | 2021-04-14 11:55 | 2021-04-15 11:55 | 37 | 2021-04-15 14:33 | 2021-04-22 14:33 | 1w | 1.51d | 0d |  | Программист#1; Ведущий программист; Программист#2; Программист#3; Программист#4 | 40h | 612 | 330 |
| 43 | 7.2 | Тестирование сайта |  | 5.04w | 2021-04-26 11:00 | 2021-07-07 12:52 |  | 2021-07-21 10:00 | 2021-08-06 14:53 | 2.5w | 11.56d | 0d | start no earlier than 2021-04-26 11:00 | Ведущий программист; Программист#1; Программист#2; Программист#3; Программист#4 | 480h | 4,035.5 | 3,941.67 |
| 44 | 8 | **Программирование** |  | 55.74d | 2021-04-13 16:00 | 2021-07-05 12:54 |  |  |  |  | 0.8d |  |  |  | 1680h | 15,694.09 |  |
| 45 | 8.1 | Программирование средств обработки базы объектов |  | 1.5w | 2021-04-13 16:00 | 2021-04-26 11:00 | 24 | 2021-04-06 15:00 | 2021-04-27 15:00 | 3w | 0.8d | 0d |  | Программист#3; Программист#4; Программист#2; Программист#1 | 240h | 1,880 | 1,780 |
| 46 | 8.2 | **Создание ядра GIS** |  | 45.22d | 2021-04-15 11:55 | 2021-06-22 14:42 |  | 2021-03-01 09:00 | 2021-06-11 12:42 | 71.46d | 1.51d | 0d |  |  | 1200h | 10,642.09 | 18,133.26 |
| 47 | 8.2.1 | Создание рабочей версии ядра |  | 9.03w | 2021-04-15 11:55 | 2021-06-22 14:42 | 42 | 2021-04-22 14:33 | 2021-06-11 12:42 | 6.78w | 1.51d |  | start no earlier than 2021-04-15 11:55 | Ведущий программист; Программист#1; Программист#2; Программист#3; Программист#4 | 1200h | 9,642.09 | 9,406.56 |
| 48 | 8.3 | **Создание интерфейса** |  | 8.9d | 2021-06-22 14:42 | 2021-07-05 12:54 | 1 | 2021-03-01 09:00 | 2021-07-05 12:42 | 86.46d | 1.51d |  |  |  | 240h | 3,172 | 5,550 |
| 49 | 8.3.1 | Программирование интерфейса |  | 1.57w | 2021-06-22 14:42 | 2021-07-05 12:54 | 46 | 2021-06-11 12:42 | 2021-07-05 12:42 | 3w | 1.51d |  | start no earlier than 2021-06-22 14:42 | Программист#3; Программист#4; Программист#1; Программист#2; Ведущий программист | 240h | 2,172 | 1,780 |
| 50 | 9 | Сдача сайта в эксплуатацию | milestone | 0w | 2021-07-07 12:52 | 2021-07-07 12:52 | 43 | 2021-08-06 14:53 | 2021-08-06 14:53 | 0w | 11.56d |  |  |  |  |  |  |
